# лр3

How a schedule from MS Project changed from version to version. A marks actual dates.

## Version 1 (data date 2021-05-10, saved 2021-04-27, file задание1 2.mpp)

Note of the change: тут тоже зачем-то будут лабы

| ID | WBS | Task | Duration | Start | Finish | Predecessors | Complete | Total float | Constraint |
| --- | --- | --- | --- | --- | --- | --- | --- | --- | --- |
| 1 | 1 | **Начало проекта** | 115.15d | 2021-03-01 08:00 A | 2021-08-13 09:10 |  | 39% | 0d |  |
| 2 | 1.1 | **Создание интерфейса** | 88.31d | 2021-03-01 08:00 A | 2021-07-07 10:29 |  | 85% | 0d |  |
| 3 | 1.1.1 | **Разработка дизайна интерфейса** | 27.12d | 2021-03-01 08:00 A | 2021-04-08 09:00 A |  | 100% |  |  |
| 4 |  | Разработка 2D графических элементов | 3.3w | 2021-03-01 08:00 A | 2021-03-24 16:00 A |  | 100% |  |  |
| 5 |  | Разработка 3D графических элементов | 2.2w | 2021-03-01 08:00 A | 2021-03-17 10:00 A | 4SS | 100% |  |  |
| 6 |  | Создание заставки | 3.33w | 2021-03-16 10:00 A | 2021-04-08 09:00 A | 5 | 100% |  |  |
| 7 |  | Программирование интерфейса | 1.52w | 2021-06-25 14:29 | 2021-07-07 10:29 | 3, 12 |  | 0d |  |
| 8 | 1.2 | **Построение базы объектов** | 67.43d | 2021-03-23 11:00 A | 2021-06-29 15:26 |  | 37% | 32.34d |  |
| 9 |  | Анализ и построение структуры базы объектов | 2.02w | 2021-03-23 11:00 A | 2021-04-06 14:00 A |  | 100% |  |  |
| 10 |  | Программирование средств обработки базы объектов | 3w | 2021-04-06 14:00 A | 2021-04-27 14:00 A | 9 | 100% |  |  |
| 11 |  | Наполнение базы объектов | 8.44w | 2021-04-27 14:00 | 2021-06-29 15:26 | 10 |  | 32.34d |  |
| 12 | 1.3 | **Создание ядра GIS** | 80.69d | 2021-03-01 08:00 A | 2021-06-25 14:29 |  | 60% | 0d |  |
| 13 |  | Анализ и проектирование ядра | 3.8w | 2021-03-01 08:00 A | 2021-03-26 17:00 A |  | 100% |  |  |
| 14 |  | Создание модели ядра | 2.03w | 2021-03-23 11:00 A | 2021-04-06 13:02 A | 13 | 100% |  |  |
| 15 |  | Тестирование модели ядра | 1w | 2021-04-06 13:02 A | 2021-04-13 13:02 A | 14 | 100% |  |  |
| 16 |  | Создание рабочей версии ядра | 10.04w | 2021-04-13 13:02 A | 2021-06-25 14:29 | 15 | 32% | 0d |  |
| 17 |  | Создание мультимедиа – наполнения | 6w | 2021-04-08 09:00 | 2021-05-25 15:00 | 3 |  | 56.4d |  |
| 18 |  | Создание справочной системы | 2w | 2021-07-19 10:54 | 2021-08-02 13:54 | 7 |  | 8.53d |  |
| 19 | 1.6 | **Создание руководства пользователя** | 18.05d | 2021-06-23 10:29 | 2021-07-19 10:54 | 7FS-10d |  | 0d |  |
| 20 |  | Разработка дизайна руководства | 1.14w | 2021-06-23 10:29 | 2021-07-01 09:29 |  |  | 0d |  |
| 21 |  | Написание руководства пользователя | 3w | 2021-06-25 10:29 | 2021-07-19 10:54 | 20SS+2d |  | 0d |  |
| 22 | 1.7 | **Создание web – сайта и поддержка** | 24.3d | 2021-06-25 10:29 | 2021-07-29 13:54 |  |  | 0d |  |
| 23 |  | Разработка структуры сайта | 1d | 2021-06-25 10:29 | 2021-06-28 10:29 | 21SS |  | 0d |  |
| 24 |  | Разработка дизайна сайта | 1.4w | 2021-06-28 10:29 | 2021-07-07 13:29 | 23 |  | 0d |  |
| 25 |  | Наполнение сайта | 3w | 2021-07-07 13:29 | 2021-07-29 13:54 | 24 |  | 0d |  |
| 26 |  | Тестирование сайта | 3.11w | 2021-07-22 13:54 | 2021-08-13 09:10 | 22FS-1w |  | 0d |  |
| 27 |  | Сдача сайта в эксплуатацию | 0w | 2021-08-13 09:10 | 2021-08-13 09:10 | 26 |  | 0d |  |
| 28 | 1.10 | **Совещание** | 111.12d | 2021-03-03 08:00 | 2021-08-11 09:00 |  |  | 0d |  |
| 29 |  | Совещание 1 | 1h | 2021-03-03 08:00 | 2021-03-03 09:00 |  |  |  | start no earlier than 2021-03-03 08:00 |
| 30 |  | Совещание 2 | 1h | 2021-03-10 08:00 | 2021-03-10 09:00 |  |  |  | start no earlier than 2021-03-10 08:00 |
| 31 |  | Совещание 3 | 1h | 2021-03-17 08:00 | 2021-03-17 09:00 |  |  |  | start no earlier than 2021-03-17 08:00 |
| 32 |  | Совещание 4 | 1h | 2021-03-24 08:00 | 2021-03-24 09:00 |  |  |  | start no earlier than 2021-03-24 08:00 |
| 33 |  | Совещание 5 | 1h | 2021-03-31 08:00 | 2021-03-31 09:00 |  |  |  | start no earlier than 2021-03-31 08:00 |
| 34 |  | Совещание 6 | 1h | 2021-04-07 08:00 | 2021-04-07 09:00 |  |  |  | start no earlier than 2021-04-07 08:00 |
| 35 |  | Совещание 7 | 1h | 2021-04-14 08:00 | 2021-04-14 09:00 |  |  |  | start no earlier than 2021-04-14 08:00 |
| 36 |  | Совещание 8 | 1h | 2021-04-21 08:00 | 2021-04-21 09:00 |  |  |  | start no earlier than 2021-04-21 08:00 |
| 37 |  | Совещание 9 | 1h | 2021-04-28 08:00 | 2021-04-28 09:00 |  |  |  | start no earlier than 2021-04-28 08:00 |
| 38 |  | Совещание 10 | 1h | 2021-05-05 08:00 | 2021-05-05 09:00 |  |  |  | start no earlier than 2021-05-05 08:00 |
| 39 |  | Совещание 11 | 1h | 2021-05-12 08:00 | 2021-05-12 09:00 |  |  |  | start no earlier than 2021-05-12 08:00 |
| 40 |  | Совещание 12 | 1h | 2021-05-19 08:00 | 2021-05-19 09:00 |  |  |  | start no earlier than 2021-05-19 08:00 |
| 41 |  | Совещание 13 | 1h | 2021-05-26 08:00 | 2021-05-26 09:00 |  |  |  | start no earlier than 2021-05-26 08:00 |
| 42 |  | Совещание 14 | 1h | 2021-06-02 08:00 | 2021-06-02 09:00 |  |  |  | start no earlier than 2021-06-02 08:00 |
| 43 |  | Совещание 15 | 1h | 2021-06-09 08:00 | 2021-06-09 09:00 |  |  |  | start no earlier than 2021-06-09 08:00 |
| 44 |  | Совещание 16 | 1h | 2021-06-16 08:00 | 2021-06-16 09:00 |  |  |  | start no earlier than 2021-06-16 08:00 |
| 45 |  | Совещание 17 | 1h | 2021-06-23 08:00 | 2021-06-23 09:00 |  |  |  | start no earlier than 2021-06-23 08:00 |
| 46 |  | Совещание 18 | 1h | 2021-06-30 08:00 | 2021-06-30 09:00 |  |  |  | start no earlier than 2021-06-30 08:00 |
| 47 |  | Совещание 19 | 1h | 2021-07-07 08:00 | 2021-07-07 09:00 |  |  |  | start no earlier than 2021-07-07 08:00 |
| 48 |  | Совещание 20 | 1h | 2021-07-14 08:00 | 2021-07-14 09:00 |  |  |  | start no earlier than 2021-07-14 08:00 |
| 49 |  | Совещание 21 | 1h | 2021-07-21 08:00 | 2021-07-21 09:00 |  |  |  | start no earlier than 2021-07-21 08:00 |
| 50 |  | Совещание 22 | 1h | 2021-07-28 08:00 | 2021-07-28 09:00 |  |  |  | start no earlier than 2021-07-28 08:00 |
| 51 |  | Совещание 23 | 1h | 2021-08-04 08:00 | 2021-08-04 09:00 |  |  |  | start no earlier than 2021-08-04 08:00 |
| 52 |  | Совещание 24 | 1h | 2021-08-11 08:00 | 2021-08-11 09:00 |  |  |  | start no earlier than 2021-08-11 08:00 |

## Version 2 (data date 2021-05-10, saved 2021-04-27, file задание3.mpp)

Note of the change: тут тоже зачем-то будут лабы

Last finish 2021-08-13 → 2021-08-11 (-2d). Complete tasks 8 → 6.

Added:

| ID | Task | Duration | Start | Finish |
| --- | --- | --- | --- | --- |
| 22 | **Документация** | 28.3d | 2021-06-23 10:29 | 2021-08-02 13:54 |

Changed:

| ID | Task | Start | Finish | Duration | Complete | Total float | Predecessors | Other |
| --- | --- | --- | --- | --- | --- | --- | --- | --- |
| 1 | **Начало проекта** |  | 2021-08-13 09:10 → 2021-08-11 09:00 (-2d) | 115.15d → 113.12d | 39% → 34% |  |  |  |
| 2 | **Дизайн** |  | 2021-07-07 10:29 → 2021-04-13 09:18 (-85d) | 88.31d → 30.16d | 85% → 73% | 0d → 50.75d |  | was named Создание интерфейса |
| 7 | Разработка структуры сайта | 2021-06-25 10:29 → 2021-03-01 08:00 (-116d) | 2021-06-28 10:29 → 2021-03-01 17:00 (-119d) |  |  | 0d → 50.75d | 26SS → none |  |
| 8 | Разработка дизайна сайта | 2021-06-28 10:29 → 2021-03-02 08:00 (-118d) | 2021-07-07 13:29 → 2021-04-13 09:18 (-85d) | 1.4w → 3w |  | 0d → 50.75d |  |  |
| 9 | **Анализ** | 2021-03-23 11:00 A → 2021-03-01 08:00 A (-22d) | 2021-06-29 15:26 → 2021-04-06 14:00 (-84d) | 67.43d → 25.62d | 37% → 74% | 32.34d → 13.5d |  | was named Построение базы объектов; resources Сервер → none |
| 10 | Анализ и построение структуры базы объектов |  | 2021-04-06 14:00 A → 2021-04-06 14:00 | 2.02w → 3.23w | 100% → 44% | none → 13.5d |  | resources Системный аналитик → Системный аналитик; Сервер |
| 12 | **Программирование** | 2021-06-25 10:29 → 2021-04-06 14:00 A (-80d) | 2021-07-29 13:54 → 2021-07-07 10:29 (-22d) | 24.3d → 62.69d | 0% → 39% | 0d → 8.9d |  | was named Создание web – сайта и поддержка |
| 14 | Программирование средств обработки базы объектов |  | 2021-04-27 14:00 A → 2021-04-27 14:00 | 3w → 3.4w | 100% → 91% | none → 36.22d |  | resources Программист#3; Программист#4 → Программист#3; Программист#4; Сервер |
| 15 | Наполнение сайта | 2021-07-07 13:29 → 2021-04-13 09:18 (-85d) | 2021-07-29 13:54 → 2021-05-06 11:43 (-84d) |  |  | 0d → 50.75d |  |  |
| 16 | Наполнение базы объектов |  | 2021-06-29 15:26 → 2021-06-21 16:14 (-8d) | 8.44w → 12.97w |  | 32.34d → 36.22d |  | resources Наборщик данных#2; Наборщик данных#1; Наборщик данных#3; Наборщик данных#4; Наборщик данных#5; Наборщик данных#6; Наборщик данных#7 → Наборщик данных#2; Наборщик данных#1; Наборщик данных#3; Наборщик данных#4; Наборщик данных#5; Наборщик данных#6; Наборщик данных#7; Сервер |
| 17 | **Создание ядра GIS** | 2021-03-01 08:00 A → 2021-03-23 11:00 A (+22d) |  | 80.69d → 65.31d | 60% → 48% | 0d → 6.51d |  |  |
| 27 | Тестирование сайта | 2021-07-22 13:54 → 2021-07-07 09:29 (-15d) | 2021-08-13 09:10 → 2021-07-29 09:45 (-15d) | 3.11w → 3.21w |  | 0d → 8.9d |  |  |
| 28 | Сдача сайта в эксплуатацию | 2021-08-13 09:10 → 2021-07-29 09:45 (-15d) | 2021-08-13 09:10 → 2021-07-29 09:45 (-15d) |  |  | 0d → 8.9d |  |  |
